Schedule from MS Project, 2018-09-14 to 2019-01-09, A marks actual dates.
Microsoft

## Calendars

- 7天工作日: Mon 19:00-20:00; Tue-Fri 08:00-12:00, 13:00-17:00; Sat-Sun 12:00-17:00, 18:00-21:00.

## Resources

| Resource |
| --- |
| 罗培铖 |
| 苏碧青 |
| 赵豪杰 |
| 张嘉诚 |
| 郑丞钧 |

## Schedule

| ID | WBS | Task | Type | Duration | Start | Finish | Predecessors | Complete | Remaining | Actual start | Actual finish | Total slack | Constraint | Resources | Work | Actual work | 输入 | 输出 |
| --- | --- | --- | --- | --- | --- | --- | --- | --- | --- | --- | --- | --- | --- | --- | --- | --- | --- | --- |
| 1 | 1 | **软件工程系列渔乐生活APP需求工程计划** |  | 99d | 2018-09-19 09:00 | 2019-01-09 18:00 |  | 28% | 70.9d | 2018-09-14 18:00 |  |  |  |  | 450h | 133h |  |  |
| 2 | 1.1 | **项目启动** |  | 9.12d | 2018-09-19 09:00 | 2018-09-28 18:00 |  | 100% |  | 2018-09-19 08:00 | 2018-09-26 16:36 |  |  |  | 11h | 11h |  |  |
| 3 | 1.1.1 | 项目任务书下达 |  | 0.12d | 2018-09-19 08:00 A | 2018-09-19 09:00 A |  | 100% |  |  |  |  | finish no earlier than 2018-09-19 18:00 | 赵豪杰 | 1h | 1h | 项目任务书 | 项目确认 |
| 4 | 1.1.2 | logo设计 | manual | 0.12d | 2018-09-21 08:00 A | 2018-09-21 09:00 A | 86 | 100% |  |  |  |  |  | 苏碧青 | 1h | 1h | 素材 | 渔乐生活logo |
| 5 | 1.1.3 | 软件资源配置 |  | 0.5d | 2018-09-21 08:00 A | 2018-09-21 12:00 A | 86 | 100% |  |  |  |  |  | 罗培铖 | 4h | 4h | 安装 | 软件资源 |
| 6 | 1.1.4 | 可行性分析文档起草 | manual | 0.62d | 2018-09-26 10:36 A | 2018-09-26 16:36 A | 87 | 100% |  |  |  |  |  | 罗培铖 | 5h | 5h | 初步可行性分析文档，可行性文档中的图表 | 可行性分析文档v0.1.0 |
| 7 | 1.2 | **项目计划** |  | 35.62d | 2018-09-14 18:00 | 2018-10-24 18:00 | 2 | 100% |  | 2018-09-28 09:00 | 2018-10-21 19:00 |  |  |  | 55h | 55h |  |  |
| 8 | 1.2.1 | 需求工程项目计划起草 |  | 0.38d | 2018-09-28 09:00 A | 2018-09-28 12:00 A | 6 | 100% |  |  |  |  |  | 张嘉诚 | 3h | 3h | 分配结果 | 需求工程项目计划v1.0.1 |
| 9 | 1.2.2 | 甘特图 |  | 1.12d | 2018-09-29 09:00 A | 2018-09-29 20:00 A | 6 | 100% |  |  |  |  | finish no earlier than 2018-09-29 18:00 | 郑丞钧 | 6h | 6h | 分配结果 | 甘特图v3 |
| 10 | 1.2.3 | OBS |  | 1.31d | 2018-09-29 09:00 A | 2018-09-30 13:30 A | 9 | 100% |  |  |  |  | finish no earlier than 2018-09-29 18:00 | 苏碧青 | 3h | 3h | 甘特图v3 | WBS |
| 11 | 1.2.4 | WBS |  | 0.38d | 2018-09-29 09:00 A | 2018-09-29 21:00 A | 9 | 100% |  |  |  |  | start no earlier than 2018-09-29 09:00 | 苏碧青 | 3h | 3h | 甘特图v3 | OBS |
| 12 | 1.2.5 | 项目章程起草 |  | 0.38d | 2018-09-29 09:00 A | 2018-09-29 12:00 A | 90 | 100% |  |  |  |  |  | 赵豪杰 | 3h | 3h | 工作改进建议 | 项目章程v0.1.0 |
| 13 | 1.2.6 | 需求工程项目计划ppt制作 |  | 1.25d | 2018-09-29 09:00 A | 2018-09-30 17:00 A | 8 | 100% |  |  |  |  | finish no earlier than 2018-09-30 18:00 | 张嘉诚 | 3h | 3h | 需求工程项目计划v1.0.1 | 需求工程项目计划ppt |
| 14 | 1.2.7 | 可行性分析文档修改 |  | 0.25d | 2018-10-14 09:00 A | 2018-10-14 15:00 A | 92 | 100% |  |  |  |  | finish no earlier than 2018-10-14 18:00 | 罗培铖 | 2h | 2h | 可行性分析文档v0.1.0 | 可行性分析文档v0.1.1 |
| 15 | 1.2.8 | 需求工程项目计划修订及ppt修改 |  | 1d | 2018-10-14 09:00 A | 2018-10-14 17:00 A | 92 | 100% |  |  |  |  |  | 苏碧青 | 2h | 2h | 需求工程项目计划v1.0.1，ppt | 需求工程项目计划v1.1.1，ppt |
| 16 | 1.2.9 | 甘特图修订 |  | 1.25d | 2018-10-14 09:00 A | 2018-10-14 19:00 A | 92 | 100% |  |  |  |  |  | 郑丞钧 | 4h | 4h | 甘特图v3 | 甘特图v4 |
| 17 | 1.2.10 | 软件开发计划起草 |  | 0.75d | 2018-10-20 09:00 A | 2018-10-20 15:00 A | 94 | 100% |  |  |  |  |  | 苏碧青 | 6h | 6h | 访谈记录 | 软件开发计划文档v1.1.0 |
| 18 | 1.2.11 | 需求工程计划-初步 | milestone | 0.5d | 2018-10-20 09:00 A | 2018-10-20 13:00 A | 94 | 100% |  |  |  |  |  | 张嘉诚 | 4h | 4h | 访谈记录 | 需求工程计划-初步文档 |
| 19 | 1.2.12 | 甘特图修订 |  | 0.93d | 2018-10-20 09:00 A | 2018-10-20 16:24 A | 94 | 100% |  |  |  |  |  | 郑丞钧 | 5h | 5h | 甘特图v4 | 甘特图v5 |
| 20 | 1.2.13 | 项目章程修订 | milestone | 0.25d | 2018-10-21 09:00 A | 2018-10-21 11:00 A | 94 | 100% |  |  |  |  |  | 赵豪杰 | 2h | 2h | 项目章程v0.1.0 | 项目章程v1.1.0 |
| 21 | 1.2.14 | 需求工程项目计划修订 |  | 1d | 2018-10-21 09:00 A | 2018-10-21 17:00 A | 94 | 100% |  |  |  |  |  | 苏碧青 | 2h | 2h | 需求工程项目计划v1.1.1 | 需求工程项目计划v1.1.2 |
| 22 | 1.2.15 | 软件开发计划修订 | milestone | 0.38d | 2018-10-21 09:00 A | 2018-10-21 13:00 A | 17 | 100% |  |  |  |  |  | 苏碧青 | 3h | 3h | 软件开发计划文档v1.1.0 | 软件开发计划文档v1.1.1 |
| 23 | 1.2.16 | 软件开发计划修订 | manual | 0.62d | 2018-10-21 13:00 A | 2018-10-21 19:00 A | 22 | 100% |  |  |  |  |  | 郑丞钧 | 4h | 4h | 软件开发计划文档v1.1.1 | 软件开发计划文档v1.1.2 |
| 24 | 1.3 | **项目执行** |  | 68d | 2018-10-21 09:00 A | 2019-01-06 18:00 | 7 | 20% | 54.65d |  |  | 2.5d |  |  | 315h | 39h |  |  |
| 25 | 1.3.1 | **第一轮迭代** |  | 27.62d | 2018-10-21 09:00 A | 2018-11-21 18:00 | 7 | 40% | 16.61d |  |  | 0d |  |  | 96h | 39h |  |  |
| 26 | 1.3.1.1 | **需求获取** |  | 9.75d | 2018-10-21 09:00 A | 2018-10-31 18:00 | 93 | 100% |  |  | 2018-10-30 18:00 |  |  |  | 39h | 39h |  |  |
| 27 | 1.3.1.1.1 | 定义愿景和范围 |  | 0.25d | 2018-10-21 09:00 A | 2018-10-21 13:00 A | 93 | 100% |  |  |  |  |  | 赵豪杰 | 2h | 2h | 访谈记录 | 愿景和范围文档 |
| 28 | 1.3.1.1.2 | 需求工程项目计划修订 | manual | 0.25d | 2018-10-26 09:00 A | 2018-10-26 11:00 A | 95 | 100% |  |  |  |  |  | 罗培铖 | 2h | 2h | 需求工程项目计划v1.1.2 | 需求工程项目计划v1.1.3 |
| 29 | 1.3.1.1.3 | 需求工程项目计划修订 | manual | 0.29d | 2018-10-26 15:20 A | 2018-10-27 12:40 A | 28 | 100% |  |  |  |  |  | 苏碧青 | 4h | 4h | 需求工程项目计划v1.1.3 | 需求工程项目计划v1.2.3 |
| 30 | 1.3.1.1.4 | 需求工程项目计划修订 |  | 0.67d | 2018-10-27 09:00 A | 2018-10-27 14:20 A | 95 | 100% |  |  |  |  |  | 郑丞钧 | 2h | 2h | 需求工程项目计划v1.2.3 | 需求工程项目计划v1.2.4 |
| 31 | 1.3.1.1.5 | 确定质量属性 | milestone | 0.66d | 2018-10-27 09:00 A | 2018-10-27 14:15 A | 95 | 100% |  |  |  |  |  | 罗培铖 | 7h | 7h | 确定质量属性 | 质量工程计划v0.0.1 |
| 32 | 1.3.1.1.6 | 可行性分析修订 |  | 1d | 2018-10-28 09:00 A | 2018-10-28 17:00 A | 95 | 100% |  |  |  |  |  | 罗培铖 | 1h | 1h | 可行性分析文档v0.1.1 | 可行性分析文档v0.1.2 |
| 33 | 1.3.1.1.7 | 甘特图修订 |  | 0.86d | 2018-10-28 09:00 A | 2018-10-28 19:52 A | 95 | 100% |  |  |  |  | finish no earlier than 2018-10-28 18:00 | 郑丞钧 | 5h | 5h | 甘特图v5 | 甘特图v7 |
| 34 | 1.3.1.1.8 | 可行性分析修订 |  | 1d | 2018-10-28 09:00 A | 2018-10-28 17:00 A | 95 | 100% |  |  |  |  |  | 罗培铖 | 2h | 2h | 可行性分析文档v0.1.2 | 可行性分析文档v0.1.3 |
| 35 | 1.3.1.1.9 | 需求工程项目计划修订 |  | 0.38d | 2018-10-28 09:00 A | 2018-10-28 15:00 A | 30 | 100% |  |  |  |  |  | 苏碧青 | 3h | 3h | 需求工程项目计划v1.2.4 | 需求工程项目计划v1.2.5 |
| 36 | 1.3.1.1.10 | 需求工程答辩ppt修改 | manual | 0.25d | 2018-10-28 18:00 A | 2018-10-28 20:00 A | 96 | 100% |  |  |  |  |  | 张嘉诚 | 3h | 3h | 需求工程答辩ppt修订前 | 需求工程答辩ppt修订后 |
| 37 | 1.3.1.1.11 | 需求工程项目计划修订 | manual | 0.12d | 2018-10-28 18:00 A | 2018-10-28 19:00 A | 96 | 100% |  |  |  |  |  | 郑丞钧 | 1h | 1h | 需求工程项目计划v1.2.5 | 需求工程项目计划v1.2.6 |
| 38 | 1.3.1.1.12 | 可行性分析修订 | milestone | 1.12d | 2018-10-29 09:00 A | 2018-10-29 18:00 A | 96 | 100% |  |  |  |  | start no earlier than 2018-10-29 09:00 | 罗培铖 | 1h | 1h | 可行性分析文档v0.1.3 | 可行性分析文档v0.1.4 |
| 39 | 1.3.1.1.13 | 需求工程项目计划修订 | milestone, manual | 1d | 2018-10-30 09:00 A | 2018-10-30 18:00 A | 97 | 100% |  |  |  |  |  | 苏碧青 | 1h | 1h | 需求工程项目计划v1.2.6 | 需求工程项目计划v1.2.7 |
| 40 | 1.3.1.1.14 | 甘特图修订 | manual | 1d | 2018-10-30 09:00 A | 2018-10-30 18:00 A | 97 | 100% |  |  |  |  |  | 郑丞钧 | 2h | 2h | 甘特图v7 | 甘特图v1.1.8 |
| 41 | 1.3.1.1.15 | 软件开发计划修订 | milestone, manual | 1d | 2018-10-30 09:00 A | 2018-10-30 18:00 A | 97 | 100% |  |  |  |  |  | 赵豪杰 | 3h | 3h | 软件开发计划文档v1.1.2 | 软件开发计划文档v1.1.2 |

| ID | WBS | Task | Type | Duration | Start | Finish | Predecessors | Total slack | Free slack | Constraint | Resources | Work | 输入 | 输出 |
| --- | --- | --- | --- | --- | --- | --- | --- | --- | --- | --- | --- | --- | --- | --- |
| 42 | 1.3.1.2 | **需求分析** |  | 4.12d | 2018-11-01 09:00 | 2018-11-06 09:00 | 26 | 0d |  |  |  | 23h |  |  |
| 43 | 1.3.1.2.1 | 绘制关联图 | manual | 1d | 2018-11-01 09:00 | 2018-11-01 18:00 | 31 |  |  |  | 赵豪杰 | 2h | 需求内容 | 关联图 |
| 44 | 1.3.1.2.2 | 分析可行性 | manual | 1d | 2018-11-02 08:00 | 2018-11-02 17:00 | 43 |  |  |  | 罗培铖 | 1h | 需求原型 | 可行性分析文档 |
| 45 | 1.3.1.2.3 | 确定需求优先级 | manual | 1d | 2018-11-02 08:00 | 2018-11-02 17:00 | 43 |  |  |  | 罗培铖 | 1h | 可行性分析文档 | 需求优先级结果 |
| 46 | 1.3.1.2.4 | 编写数据字典 | manual | 0.2d | 2018-11-02 08:00 | 2018-11-02 09:36 | 43 |  |  |  | 罗培铖 | 1h | 系统内容 | 数据字典 |
| 47 | 1.3.1.2.5 | **需求建模** |  | 2d | 2018-11-03 09:00 | 2018-11-04 18:00 | 44, 45, 46 |  |  |  |  | 8h |  |  |
| 48 | 1.3.1.2.5.1 | 用例图 | manual | 1d | 2018-11-03 12:00 | 2018-11-03 21:00 | 44, 45, 46 |  |  |  | 赵豪杰 | 6h | 系统内容 | 用例图 |
| 49 | 1.3.1.2.5.2 | 交互图 | manual | 1d | 2018-11-04 09:00 | 2018-11-04 17:00 | 44, 45, 46 |  |  |  | 赵豪杰 | 2h | 系统内容 | 交互图 |
| 50 | 1.3.1.2.6 | **原型构建** |  | 0.62d | 2018-11-04 18:00 | 2018-11-06 09:00 | 47 | 3.08d |  |  |  | 10h |  |  |
| 51 | 1.3.1.2.6.1 | 界面原型 |  | 0.62d | 2018-11-04 18:00 | 2018-11-06 09:00 | 47 | 3.08d |  |  | 苏碧青; 罗培铖 | 10h | 交互图 | 界面 |
| 52 | 1.3.1.3 | **需求规格说明** |  | 7d | 2018-11-06 10:00 | 2018-11-13 18:00 | 42 |  |  |  |  | 18h |  |  |
| 53 | 1.3.1.3.1 | 采用软件需求规格说明模板 |  | 1.12d | 2018-11-06 10:00 | 2018-11-07 11:00 | 47 | 2.95d | 0d |  | 赵豪杰 | 2h | 访谈记录 | 模板采用结果 |
| 54 | 1.3.1.3.2 | 指明需求来源 |  | 0.45d | 2018-11-07 11:00 | 2018-11-07 15:36 | 53 | 2.95d | 0d |  | 苏碧青 | 3h | 需求记录 | 明确来源 |
| 55 | 1.3.1.3.3 | 钓鱼用户访谈 |  | 1.1d | 2018-11-07 15:36 | 2018-11-08 16:24 | 54 | 2.95d | 0d |  | 罗培铖; 苏碧青; 张嘉诚; 赵豪杰; 郑丞钧 | 5h | 明确来源 | 访谈记录 |
| 56 | 1.3.1.3.4 | 为每个需求分配唯一标识 |  | 1d | 2018-11-09 16:24 | 2018-11-10 20:24 | 98 | 2.95d | 0d |  | 张嘉诚 | 1h | 会议记录 | 标识需求 |
| 57 | 1.3.1.3.5 | 记录业务规范 |  | 1d | 2018-11-10 20:24 | 2018-11-11 20:24 | 56 | 2.95d | 0d |  | 苏碧青 | 1h | 项目需求 | 业务规范 |
| 58 | 1.3.1.3.6 | 整理成需求规格说明书 | milestone | 0.25d | 2018-11-11 20:24 | 2018-11-13 08:24 | 57 | 2.95d | 0d | finish no earlier than 2018-11-11 18:00 | 罗培铖 | 2h | 会议记录 | 需求规格说明书 |
| 59 | 1.3.1.3.7 | 需求规格说明书修订 | milestone | 0.5d | 2018-11-13 08:24 | 2018-11-13 13:24 | 58 | 7.58d |  |  | 苏碧青 | 4h | 需求规格说明书 | 需求规格说明书修订 |
| 60 | 1.3.1.4 | **验证** |  | 5.12d | 2018-11-16 09:00 | 2018-11-21 18:00 | 53 |  |  |  |  | 16h |  |  |
| 61 | 1.3.1.4.1 | 评审需求 | manual | 1d | 2018-11-16 08:00 | 2018-11-16 17:00 | 100 |  |  |  | 罗培铖; 苏碧青; 张嘉诚; 赵豪杰; 郑丞钧 | 5h | 需求规格说明书 | 评审结果 |
| 62 | 1.3.1.4.2 | 测试需求 | manual | 1d | 2018-11-19 09:00 | 2018-11-19 17:00 | 61 |  |  |  | 罗培铖; 苏碧青 | 2h | 评审结果 | 测试结果 |
| 63 | 1.3.1.4.3 | 原型修改 | manual | 1d? | 2018-11-20 08:00 | 2018-11-20 17:00 | 62 |  |  |  | 赵豪杰 | 1h | 测试结果 | 新的原型 |
| 64 | 1.3.1.4.4 | 软件需求变更文档 | milestone, manual | 0.3d | 2018-11-21 08:00 | 2018-11-21 10:24 | 63 |  |  |  | 郑丞钧 | 4h |  | 软件需求变更文档 |
| 65 | 1.3.1.4.5 | 系统设计与实现计划 | milestone, manual | 0.3d | 2018-11-21 08:00 | 2018-11-21 10:24 | 63 |  |  |  | 郑丞钧 | 4h |  | 系统设计与实现计划文档 |

| ID | WBS | Task | Type | Duration | Start | Finish | Predecessors | Complete | Remaining | Actual start | Total slack | Free slack | Constraint | Resources | Work | Actual work | 输入 | 输出 |
| --- | --- | --- | --- | --- | --- | --- | --- | --- | --- | --- | --- | --- | --- | --- | --- | --- | --- | --- |
| 66 | 1.3.2 | **第二次迭代** |  | 7.12d | 2018-11-22 08:00 | 2018-11-29 18:00 | 25 |  |  |  | 0d |  |  |  | 15h |  |  |  |
| 67 | 1.3.2.1 | **需求分析** |  | 5d | 2018-11-22 09:00 | 2018-11-26 18:00 | 25 |  |  |  |  |  |  |  | 11h |  |  |  |
| 68 | 1.3.2.1.1 | 细化用户需求 | manual | 1d? | 2018-11-22 08:00 | 2018-11-22 17:00 | 101 |  |  |  |  |  |  | 罗培铖 | 1h |  | 需求获取文档 | 更进后的需求文档 |
| 69 | 1.3.2.1.2 | 得出功能需求 | manual | 1d? | 2018-11-22 08:00 | 2018-11-22 17:00 | 101 |  |  |  |  |  |  | 苏碧青 | 2h |  | 更进后的需求文档 | 功能需求 |
| 70 | 1.3.2.1.3 | 修改数据字典 | manual | 1d? | 2018-11-23 08:00 | 2018-11-23 17:00 | 68, 69 |  |  |  |  |  |  | 张嘉诚 | 1h |  | 功能需求 | 新的数据字典 |
| 71 | 1.3.2.1.4 | 需求建模 | manual | 0.12d | 2018-11-24 12:00 | 2018-11-24 13:00 | 70 |  |  |  |  |  |  | 郑丞钧 | 4h |  | 新的数据字典 | 需求模型 |
| 72 | 1.3.2.1.5 | 软件概要设计说明 | milestone, manual | 0.3d | 2018-11-25 09:00 | 2018-11-25 11:24 | 71 |  |  |  |  |  |  | 张嘉诚 | 3h |  | 需求模型 | 软件概要设计说明书 |
| 73 | 1.3.2.2 | **原型开发** |  | 3d | 2018-11-27 09:00 | 2018-11-29 18:00 | 67 |  |  |  |  |  |  |  | 4h |  |  |  |
| 74 | 1.3.2.2.1 | 界面布局设计 | manual | 1d | 2018-11-27 08:00 | 2018-11-27 17:00 | 67 |  |  |  |  |  |  | 罗培铖 | 1h |  | 需求模型 | 界面原型 |
| 75 | 1.3.2.2.2 | 原件样式设计 | manual | 1d | 2018-11-27 09:00 | 2018-11-27 18:00 | 67 |  |  |  |  |  |  | 苏碧青 | 1h |  | 需求模型 | 样式 |
| 76 | 1.3.2.2.3 | 总体构建 | manual | 1.12d | 2018-11-28 08:00 | 2018-11-28 18:00 | 74, 75 |  |  |  |  |  |  | 赵豪杰 | 2h |  | 界面原型，样式 | 界面 |
| 77 | 1.3.3 | **编码/测试计划** |  | 17.88d | 2018-12-18 08:00 | 2019-01-06 18:00 | 112 |  |  |  |  |  |  |  | 204h |  |  |  |
| 78 | 1.3.3.1 | 培训计划 | milestone | 0.5d | 2018-12-18 08:00 | 2018-12-18 12:00 | 112 |  |  |  | 2.57d | 1.62d |  | 罗培铖 | 4h |  | 界面原型，样式 | 培训计划 |
| 79 | 1.3.3.2 | Android端编码 |  | 3.5d | 2018-12-20 09:00 | 2018-12-23 17:00 | 78 |  |  |  | 5.45d | 4.5d | start no earlier than 2018-12-20 09:00 | 苏碧青; 张嘉诚; 罗培铖 | 84h |  | 代码 | 前端作品 |
| 80 | 1.3.3.3 | 服务器端编码 | manual | 8d | 2018-12-20 09:00 | 2018-12-28 17:00 | 78 |  |  |  |  |  |  | 赵豪杰; 郑丞钧 | 52h |  | 代码 | 后端作品 |
| 81 | 1.3.3.4 | 测试计划 | milestone | 0.63d | 2018-12-29 12:00 | 2018-12-29 18:01 | 79, 80 |  |  |  | 0.95d | 0d | finish no earlier than 2018-12-29 18:00 | 罗培铖 | 2h |  | 安装部署计划 | 测试计划 |
| 82 | 1.3.3.5 | 联合调试 | manual | 5.88d | 2018-12-29 09:00 | 2019-01-04 11:00 | 81 |  |  |  |  |  |  | 罗培铖; 苏碧青; 张嘉诚; 赵豪杰; 郑丞钧 | 60h |  | 前端代码、后端代码 | 渔乐生活app |
| 83 | 1.3.3.6 | 安装部署计划 | milestone | 0.3d | 2019-01-04 11:00 | 2019-01-04 14:24 | 82 |  |  |  | 1.95d | 0.33d |  | 罗培铖 | 1h |  | 渔乐生活app | 安装部署计划 |
| 84 | 1.3.3.7 | 系统维护计划 | milestone | 0.12d | 2019-01-05 12:00 | 2019-01-05 13:00 | 83 |  |  |  | 4d |  | start no earlier than 2019-01-05 09:00 | 罗培铖 | 1h |  | 渔乐生活app | 安装部署计划 |
| 85 | 1.4 | **项目控制** |  | 99d | 2018-09-19 09:00 | 2019-01-09 18:00 |  | 8% | 90.64d | 2018-09-20 08:00 |  |  |  |  | 60h | 28h |  |  |
| 86 | 1.4.1 | 任务分配 | manual | 0.03d | 2018-09-20 08:00 A | 2018-09-20 08:12 A | 3 | 100% |  |  |  |  |  | 罗培铖; 苏碧青; 张嘉诚; 赵豪杰; 郑丞钧 | 1h | 1h | 项目任务书 | 会议记录、任务分配 |
| 87 | 1.4.2 | 与杨枨老师确认项目大致内容 | manual | 0.03d | 2018-09-26 09:00 A | 2018-09-26 09:12 A | 4, 5 | 100% |  |  |  |  |  | 罗培铖; 苏碧青; 张嘉诚; 赵豪杰; 郑丞钧 | 1h | 1h | 谈话记录 | 录音资料 |
| 88 | 1.4.3 | 第一次小组会议 | manual | 0.03d | 2018-09-27 09:00 A | 2018-09-27 09:12 A | 6 | 100% |  |  |  |  |  | 罗培铖; 苏碧青; 张嘉诚; 赵豪杰; 郑丞钧 | 1h | 1h | 需求工程-初步任务分配 | 分配结果 |
| 89 | 1.4.4 | 组长检查 | manual | 0.12d | 2018-09-28 13:00 A | 2018-09-28 14:00 A | 8, 9, 10, 11 | 100% |  |  |  |  |  | 赵豪杰 | 1h | 1h | 检查工作结果 | 决定开会 |
| 90 | 1.4.5 | 第二次小组会议 | manual | 0.03d | 2018-09-28 13:48 A | 2018-09-28 14:00 A | 89 | 100% |  |  |  |  |  | 罗培铖; 苏碧青; 张嘉诚; 赵豪杰; 郑丞钧 | 1h | 1h | 检查工作结果 | 工作改进建议 |
| 91 | 1.4.6 | 与杨枨老师进行非正式访谈 | manual | 0.03d | 2018-10-11 09:00 A | 2018-10-11 09:12 A | 12 | 100% |  |  |  |  |  | 罗培铖; 苏碧青; 张嘉诚; 赵豪杰; 郑丞钧 | 1h | 1h | 客户预约 | 得到开启正式访谈的充分必要条件 |
| 92 | 1.4.7 | 第三次小组会议 | manual | 0.03d | 2018-10-11 10:36 A | 2018-10-11 10:48 A | 91 | 100% |  |  |  |  |  | 罗培铖; 苏碧青; 张嘉诚; 赵豪杰; 郑丞钧 | 1h | 1h | 得到开启正式访谈的充分必要条件 | 任务分配以及UML答辩准备 |
| 93 | 1.4.8 | 与杨枨老师进行客户访谈 | manual | 0.12d | 2018-10-18 09:00 A | 2018-10-18 10:00 A | 92 | 100% |  |  |  |  |  | 罗培铖; 苏碧青; 张嘉诚; 赵豪杰; 郑丞钧 | 5h | 5h | 提出需求问题 | 获取需求，为定义愿景提供条件 |
| 94 | 1.4.9 | 第四次小组会议 | manual | 0.2d | 2018-10-18 09:00 A | 2018-10-18 10:36 A | 93 | 100% |  |  |  |  |  | 罗培铖; 苏碧青; 张嘉诚; 赵豪杰; 郑丞钧 | 1h | 1h | 学习笔记 | 会议记录 |
| 95 | 1.4.10 | 第五次小组会议 |  | 0.2d | 2018-10-25 09:00 A | 2018-10-25 10:36 A | 27 | 100% |  |  |  |  | finish no earlier than 2018-10-25 18:00 | 罗培铖; 苏碧青; 张嘉诚; 赵豪杰; 郑丞钧 | 8h | 8h | 学习笔记 | 会议记录 |
| 96 | 1.4.11 | 第一次组内评审 |  | 1d | 2018-10-28 09:00 A | 2018-10-28 17:00 A | 28, 33, 30, 31, 34, 35 | 100% |  |  |  |  |  | 罗培铖; 苏碧青; 张嘉诚; 赵豪杰; 郑丞钧 | 7h | 7h | 需求工程相关文档 | 评审记录，改进建议 |
| 97 | 1.4.12 | 第一次评审 | manual | 0.03d | 2018-10-28 18:00 | 2018-10-28 18:12 | 96 |  |  |  |  |  |  | 罗培铖; 苏碧青; 张嘉诚; 赵豪杰; 郑丞钧 | 2h |  | 需求工程项目计划 | 评审通过 |
| 98 | 1.4.13 | 小组会议 | manual | 1d? | 2018-11-08 16:24 | 2018-11-09 16:24 | 55 |  |  |  |  |  |  | 罗培铖; 苏碧青; 张嘉诚; 赵豪杰; 郑丞钧 | 1h |  | 访谈记录 | 会议记录 |
| 99 | 1.4.14 | 与杨枨老师进行交流 | manual | 1d | 2018-11-14 08:00 | 2018-11-14 17:00 | 58 |  |  |  |  |  |  | 罗培铖; 苏碧青; 张嘉诚; 赵豪杰; 郑丞钧 | 1h |  | 需求规格说明书 | 交流记录 |
| 100 | 1.4.15 | 小组会议 | manual | 1d | 2018-11-15 08:00 | 2018-11-15 17:00 | 99 |  |  |  |  |  |  | 罗培铖; 苏碧青; 张嘉诚; 赵豪杰; 郑丞钧 | 1h |  | 交流记录 | 会议记录 |
| 101 | 1.4.16 | 小组会议 | manual | 1d? | 2018-11-21 08:00 | 2018-11-21 17:00 | 63 |  |  |  |  |  |  | 罗培铖; 苏碧青; 张嘉诚; 赵豪杰; 郑丞钧 | 1h |  | 原型 | 会议记录 |
| 102 | 1.4.17 | 与杨枨老师进行交流 | manual | 0.2d? | 2018-11-29 08:00 | 2018-11-29 09:36 | 76 |  |  |  |  |  |  | 罗培铖; 苏碧青; 张嘉诚; 赵豪杰; 郑丞钧 | 1h |  | 会议记录 | 访谈记录 |
| 103 | 1.4.18 | 小组会议 | manual | 0.3d | 2018-11-29 09:36 | 2018-11-29 12:00 | 102 |  |  |  |  |  |  | 罗培铖; 苏碧青; 张嘉诚; 赵豪杰; 郑丞钧 | 1h |  | 访谈记录 | 会议记录 |

| ID | WBS | Task | Type | Duration | Start | Finish | Predecessors | Resources | Work | 输入 | 输出 |
| --- | --- | --- | --- | --- | --- | --- | --- | --- | --- | --- | --- |
| 104 | 1.4.19 | **需求规格审核** |  | 6.12d | 2018-11-30 09:00 | 2018-12-06 18:00 | 103 |  | 7h |  |  |
| 105 | 1.4.19.1 | 审查需求文档 | manual | 1d? | 2018-11-29 13:00 | 2018-11-30 12:00 | 103 | 赵豪杰 | 1h | 需求规格说明书 | 审查结果 |
| 106 | 1.4.19.2 | 小组会议 | manual | 1d? | 2018-11-30 13:00 | 2018-12-01 16:00 | 105 | 罗培铖; 苏碧青; 张嘉诚; 赵豪杰; 郑丞钧 | 1h | 审查结果 | 会议记录 |
| 107 | 1.4.19.3 | 编写需求文档 | manual | 1d? | 2018-12-03 13:00 | 2018-12-04 09:00 | 106 | 罗培铖 | 1h | 会议记录 | 需求文档 |
| 108 | 1.4.19.4 | 编写用户手册 | manual | 1d? | 2018-12-03 13:00 | 2018-12-04 09:00 | 106 | 苏碧青 | 1h | 需求文档 | 用户手册 |
| 109 | 1.4.19.5 | 确定合格的标准 | manual | 1d? | 2018-12-03 13:00 | 2018-12-04 09:00 | 106 | 张嘉诚 | 1h | 用户手册 | 合格标准 |
| 110 | 1.4.19.6 | 小组会议 | manual | 1d? | 2018-12-04 13:00 | 2018-12-05 12:00 | 107, 108, 109 | 罗培铖; 苏碧青; 张嘉诚; 赵豪杰; 郑丞钧 | 1h | 需求文档，用户手册，合格标准 | 会议记录 |
| 111 | 1.4.19.7 | 与杨枨老师进行交流 | manual | 1d? | 2018-12-05 13:00 | 2018-12-06 12:00 | 110 | 罗培铖; 苏碧青; 张嘉诚; 赵豪杰; 郑丞钧 | 1h | 会议记录 | 交流记录 |
| 112 | 1.4.20 | **需求管理** |  | 10.12d | 2018-12-07 08:00 | 2018-12-17 17:00 | 104 |  | 17h |  |  |
| 113 | 1.4.20.1 | 小组会议 | manual | 1d? | 2018-12-07 08:00 | 2018-12-07 17:00 | 104 | 罗培铖; 苏碧青; 张嘉诚; 赵豪杰; 郑丞钧 | 1h | 交流记录 | 会议记录 |
| 114 | 1.4.20.2 | 确定变更控制过程 | manual | 0.3d? | 2018-12-08 12:00 | 2018-12-08 14:24 | 113 | 赵豪杰 | 1h | 会议记录 | 变更控制过程 |
| 115 | 1.4.20.3 | 建立变更控制委员会 | manual | 0.3d? | 2018-12-08 12:00 | 2018-12-08 14:24 | 113 | 赵豪杰 | 1h | 变更控制过程 | 变更控制委员会 |
| 116 | 1.4.20.4 | 进行变更影响分析 | manual | 1d? | 2018-12-10 10:24 | 2018-12-10 18:24 | 114, 115 | 罗培铖 | 1h | 变更控制委员会 | 变更影响分析 |
| 117 | 1.4.20.5 | 跟踪每一项变更 | manual | 1d? | 2018-12-11 10:24 | 2018-12-12 10:24 | 116 | 郑丞钧 | 4h | 变更影响分析 | 跟踪状态记录 |
| 118 | 1.4.20.6 | 编写需求文档的基准版本和控制版本 | manual | 1d? | 2018-12-12 10:24 | 2018-12-13 10:24 | 117 | 苏碧青 | 1h | 跟踪状态记录 | 需求文档基准版本和控制版本 |
| 119 | 1.4.20.7 | 维护变更历史纪录 | manual | 0.2d | 2018-12-13 10:24 | 2018-12-13 12:00 | 118 | 张嘉诚 | 1h | 需求文档基准版本和控制版本 | 维护结果 |
| 120 | 1.4.20.8 | 小组会议 | manual | 0.2d | 2018-12-13 10:24 | 2018-12-13 12:00 | 118 | 罗培铖; 苏碧青; 张嘉诚; 赵豪杰; 郑丞钧 | 1h | 维护结果 | 会议记录 |
| 121 | 1.4.20.9 | 跟踪需求状态 | manual | 1d? | 2018-12-13 13:00 | 2018-12-14 12:00 | 120 | 赵豪杰 | 1h | 会议记录 | 跟踪状态记录 |
| 122 | 1.4.20.10 | 衡量需求稳定性 | manual | 1d? | 2018-12-13 13:00 | 2018-12-14 12:00 | 120 | 罗培铖 | 1h | 跟踪状态记录 | 需求稳定性记录 |
| 123 | 1.4.20.11 | 使用需求管理工具 | manual | 1d? | 2018-12-14 13:00 | 2018-12-15 16:00 | 121, 122 | 郑丞钧 | 4h | 需求稳定性记录 | 存储需求 |
| 124 | 1.5 | **项目收尾** |  | 3.62d | 2019-01-06 09:00 | 2019-01-09 18:00 | 77 |  | 9h |  |  |
| 125 | 1.5.1 | 项目总结 | milestone, manual | 1.12d | 2019-01-06 18:00 | 2019-01-08 14:00 | 77 | 赵豪杰 | 3h | 项目工作 | 项目总结 |
| 126 | 1.5.2 | 制作PPT | manual | 1d | 2019-01-08 14:00 | 2019-01-09 14:00 | 125 | 张嘉诚 | 1h | ppt | 会议记录 |
| 127 | 1.5.3 | 答辩 | manual | 0.5d | 2019-01-09 14:00 | 2019-01-09 18:00 | 126 | 罗培铖; 苏碧青; 张嘉诚; 赵豪杰; 郑丞钧 | 5h | 文档，作品 | 考评结果，期末成绩 |

| ID | WBS | Task | Type | Duration | Start | Finish | Predecessors | Complete | Remaining | Total slack | Free slack | Constraint | Resources | Work | Actual work | 输入 | 输出 |
| --- | --- | --- | --- | --- | --- | --- | --- | --- | --- | --- | --- | --- | --- | --- | --- | --- | --- |
| 128 | 2 | **UML翻转课堂** |  | 23d | 2018-10-13 09:00 A | 2018-11-07 18:00 |  | 75% | 5.76d |  |  |  |  | 54h | 37h |  |  |
| 129 | 2.1 | UML概述材料 |  | 0.75d | 2018-10-13 09:00 A | 2018-10-13 16:00 A |  | 100% |  |  |  |  | 赵豪杰 | 6h | 6h | UML学习 | UML概述材料 |
| 130 | 2.2 | UML概论及ppt制作 |  | 1d | 2018-10-14 09:00 A | 2018-10-14 17:00 A | 129 | 100% |  |  |  |  | 张嘉诚 | 8h | 8h | UML概述材料 | UML概论ppt |
| 131 | 2.3 | UML评审 | manual | 0.03d | 2018-10-19 09:00 A | 2018-10-19 09:12 A | 130 | 100% |  |  |  |  | 罗培铖; 苏碧青; 张嘉诚; 赵豪杰; 郑丞钧 | 1h | 1h | UML概论ppt | 评审通过 |
| 132 | 2.4 | UML工具:Rational Rose及ppt制作 |  | 1.15d | 2018-10-21 09:00 A | 2018-10-21 19:12 A | 131 | 100% |  |  |  |  | 张嘉诚 | 7h | 7h | UML工具学习 | UML工具:Rational Rose ppt |
| 133 | 2.5 | UML评审 | manual | 0.2d | 2018-10-24 09:00 A | 2018-10-24 10:36 A | 132 | 100% |  |  |  |  | 罗培铖; 苏碧青; 张嘉诚; 赵豪杰; 郑丞钧 | 1h | 1h | UML工具:Rational Rose ppt | 评审通过 |
| 134 | 2.6 | UML基础1的ppt材料制作 |  | 1.12d | 2018-10-27 09:00 A | 2018-10-27 19:00 A | 133 | 100% |  |  |  |  | 赵豪杰 | 7h | 7h | UML材料制作 | ppt材料 |
| 135 | 2.7 | UML基础1:ppt | manual | 0.69d | 2018-10-27 18:00 A | 2018-10-28 14:30 A | 134 | 100% |  |  |  |  | 张嘉诚 | 7h | 7h | ppt材料 | UML基础1:ppt |
| 136 | 2.8 | UML评审 | manual | 0.2d | 2018-10-31 09:00 | 2018-10-31 10:36 | 135 |  |  |  |  |  | 罗培铖; 苏碧青; 张嘉诚; 赵豪杰; 郑丞钧 | 5h |  | UML基础1:ppt | UML评审通过 |
| 137 | 2.9 | UML基础2的ppt材料制作 |  | 0.25d | 2018-11-03 12:00 | 2018-11-03 14:00 | 136 |  |  | 57.8d | 0.75d | start no earlier than 2018-11-03 09:00 | 赵豪杰 | 2h |  | UML材料制作 | ppt材料 |
| 138 | 2.10 | 基础2:ppt | manual | 1d | 2018-11-04 12:00 | 2018-11-04 21:00 | 137 |  |  |  |  |  | 张嘉诚 | 5h |  | ppt材料 | UML基础2ppt |
| 139 | 2.11 | UML评审 | manual | 0.2d | 2018-11-07 09:00 | 2018-11-07 10:36 | 138 |  |  |  |  |  | 罗培铖; 苏碧青; 张嘉诚; 赵豪杰; 郑丞钧 | 5h |  | UML基础2ppt | UML评审通过 |
